# K15T1-Team11-MRBS-Schedule-ver0.1

How a schedule from MS Project changed from version to version. A marks actual dates.

## Version 1 (saved 2012-06-02, file K15T1-Team11-MRBS-Schedule-ver0.1.mpp)

| ID | WBS | Task | Duration | Start | Finish | Predecessors | Total float |
| --- | --- | --- | --- | --- | --- | --- | --- |
| 1 | 1 | **MRBS Project** | 60d? | 2012-05-21 | 2012-08-10 |  | 0d |
| 2 | 1.1 | **Project Management** | 4d? | 2012-06-04 | 2012-06-07 |  | 0d |
| 3 | 1.1.1 | **Making "MRBS Project" plan** | 4d? | 2012-06-04 | 2012-06-07 |  | 0d |
| 4 | 1.1.1.1 | **Scope** | 4d? | 2012-06-04 | 2012-06-07 |  | 0d |
| 5 |  | Determine project scope | 1d? | 2012-06-04 | 2012-06-04 |  | 0d |
| 6 |  | Secure porject sponsorship | 1d? | 2012-06-05 | 2012-06-05 | 5 | 0d |
| 7 |  | Define preliminary resources | 1d? | 2012-06-06 | 2012-06-06 | 6 | 0d |
| 8 |  | Scope complete | 1d? | 2012-06-07 | 2012-06-07 | 7 | 0d |
| 9 |  | Goal & Objective of MRBS project | 1d? | 2012-06-04 | 2012-06-04 |  | 0d |
| 10 |  | Making comunication plan | 1d? | 2012-06-04 | 2012-06-04 |  | 0d |
| 11 | 1.1.1.4 | **Making measurment plan** | 1d | 2012-06-04 | 2012-06-04 |  | 0d |
| 12 |  | Define software measurement process | 1d? | 2012-06-04 | 2012-06-04 |  | 0d |
| 13 |  | Determine method & technical | 1d? | 2012-06-04 | 2012-06-04 |  | 0d |
| 14 |  | Estimate for overall project | 1d? | 2012-06-04 | 2012-06-04 |  | 0d |
| 15 |  | continous | 1d? | 2012-06-04 | 2012-06-04 |  | 0d |
| 16 | 1.1.1.5 | **Change Management** | 1d | 2012-06-04 | 2012-06-04 |  | 0d |
| 17 |  | continous | 1d? | 2012-06-04 | 2012-06-04 |  | 0d |
| 18 |  | continous | 1d? | 2012-06-04 | 2012-06-04 |  | 0d |
| 19 | 1.1.1.6 | **Risk Management** | 1d | 2012-06-04 | 2012-06-04 |  | 0d |
| 20 |  | continous | 1d? | 2012-06-04 | 2012-06-04 |  | 0d |
| 21 |  | continous | 1d? | 2012-06-04 | 2012-06-04 |  | 0d |
| 22 | 1.2 | **Project Monitor & Control** | 1d | 2012-06-04 | 2012-06-04 |  | 0d |
| 23 |  | Determine methodology for Project | 1d? | 2012-06-04 | 2012-06-04 |  | 0d |
| 24 |  | Determine method & technical | 1d? | 2012-06-04 | 2012-06-04 |  | 0d |
| 25 |  | Configuration management | 1d? | 2012-06-04 | 2012-06-04 |  | 0d |
| 26 | 1.2.4 | **Updade all document** | 1d | 2012-06-04 | 2012-06-04 |  | 0d |
| 27 |  | Update project plan | 1d? | 2012-06-04 | 2012-06-04 |  | 0d |
| 28 |  | Update schedule | 1d? | 2012-06-04 | 2012-06-04 |  | 0d |
| 29 |  | continuous | 1d? | 2012-06-04 | 2012-06-04 |  | 0d |
| 30 |  | continuous | 1d? | 2012-06-04 | 2012-06-04 |  | 0d |
| 31 | 1.3 | **Making detail schedule** | 1d | 2012-06-04 | 2012-06-04 |  | 0d |
| 32 |  | Assign work for members | 1d? | 2012-06-04 | 2012-06-04 |  | 0d |
| 33 |  | continous | 1d? | 2012-06-04 | 2012-06-04 |  | 0d |
| 34 | 1.4 | **Requirement** | 1d? | 2012-06-04 | 2012-06-04 |  | 0d |
| 35 | 1.4.1 | **Making requirement management plan** | 1d | 2012-06-04 | 2012-06-04 |  | 0d |
| 36 |  | Determine process | 1d? | 2012-06-04 | 2012-06-04 |  | 0d |
| 37 |  | continuos | 1d? | 2012-06-04 | 2012-06-04 |  | 0d |
| 38 |  | continuos | 1d? | 2012-06-04 | 2012-06-04 |  | 0d |
| 39 | 1.4.2 | **Making concept - operation** | 1d | 2012-06-04 | 2012-06-04 |  | 0d |
| 40 | 1.4.2.1 | **Define system requirement** | 1d | 2012-06-04 | 2012-06-04 |  | 0d |
| 41 | 1.4.2.1.1 | **Define current infrastructure** | 1d | 2012-06-04 | 2012-06-04 |  | 0d |
| 42 |  | Define process working of current system | 1d? | 2012-06-04 | 2012-06-04 |  | 0d |
| 43 |  | Define preliminary hardware enviroment | 1d? | 2012-06-04 | 2012-06-04 |  | 0d |
| 44 |  | Define preliminary software enviroment | 1d? | 2012-06-04 | 2012-06-04 |  | 0d |
| 45 |  | Define prelimininary comunications enviroment | 1d? | 2012-06-04 | 2012-06-04 |  | 0d |
| 46 |  | Define preliminary connectivity LAN/WAN | 1d? | 2012-06-04 | 2012-06-04 |  | 0d |
| 47 |  | Define preliminary geographic factor | 1d? | 2012-06-04 | 2012-06-04 |  | 0d |
| 48 |  | Define & analysis problems | 1d? | 2012-06-04 | 2012-06-04 |  | 0d |
| 49 | 1.4.3 | **Define target areas for improvement** | 1d | 2012-06-04 | 2012-06-04 |  | 0d |
| 50 |  | Show solution | 1d? | 2012-06-04 | 2012-06-04 |  | 0d |
| 51 |  | List functions | 1d? | 2012-06-04 | 2012-06-04 |  | 0d |
| 52 |  | continuos | 1d? | 2012-06-04 | 2012-06-04 |  | 0d |
| 53 |  | continuos | 1d? | 2012-06-04 | 2012-06-04 |  | 0d |
| 54 | 1.4.4 | **Making SRS** | 1d? | 2012-06-04 | 2012-06-04 |  | 0d |
| 55 |  | Detail UC1 | 1d | 2012-06-04 | 2012-06-04 |  | 0d |
| 56 |  | Detail UC2 | 1d? | 2012-06-04 | 2012-06-04 |  | 0d |
| 57 |  | continuos | 1d? | 2012-06-04 | 2012-06-04 |  | 0d |
| 58 |  | continuos | 1d? | 2012-06-04 | 2012-06-04 |  | 0d |
| 59 |  | Review UC | 1d? | 2012-06-04 | 2012-06-04 |  | 0d |
| 60 |  | Update SRS | 1d? | 2012-06-04 | 2012-06-04 |  | 0d |
| 61 | 1.6 | **Analysis & Design** | 1d? | 2012-06-04 | 2012-06-04 |  | 0d |
| 62 |  | Making SDS | 1d? | 2012-06-04 | 2012-06-04 |  | 0d |
| 63 |  | Making SAD | 1d? | 2012-06-04 | 2012-06-04 |  | 0d |
| 64 | 1.7 | **Development** | 1d? | 2012-06-04 | 2012-06-04 |  | 0d |
| 65 |  | Source code | 1d? | 2012-06-04 | 2012-06-04 |  | 0d |
| 66 |  | Defect Report | 1d? | 2012-06-04 | 2012-06-04 |  | 0d |
| 67 |  | Prototype | 1d | 2012-06-04 | 2012-06-04 |  | 0d |
| 68 | 1.8 | **Testing** | 1d? | 2012-06-04 | 2012-06-04 |  | 0d |
| 69 |  | Making test plan | 1d? | 2012-06-04 | 2012-06-04 |  | 0d |
| 70 |  | Defect report | 1d? | 2012-06-04 | 2012-06-04 |  | 0d |

| ID | WBS | Task | Duration | Start | Finish | Total float |
| --- | --- | --- | --- | --- | --- | --- |
| 71 | 1.9 | **Packing & Deployment** | 1d? | 2012-06-04 | 2012-06-04 | 0d |
| 72 |  | Prototype | 1d | 2012-06-04 | 2012-06-04 | 0d |
| 73 |  | User guide | 1d? | 2012-06-04 | 2012-06-04 | 0d |

## Version 2 (saved 2012-06-02, file K15T1-Team11-MRBS-Schedule-ver0.1.mpp)

Last finish stays 2012-08-10.

Added:

| ID | Task | Duration | Start | Finish | Resources |
| --- | --- | --- | --- | --- | --- |
| 10 | Short time goal | 1d? | 2012-06-04 | 2012-06-04 | Van Le |
| 11 | Long time goal | 1d? | 2012-06-04 | 2012-06-04 | Van Le |

Changed:

| ID | Task | Duration | Other |
| --- | --- | --- | --- |
| 6 | Secure project sponsorship |  | was named Secure porject sponsorship |
| 9 | **Goal & Objective of MRBS project** | 1d? → 1d |  |

## Version 3 (saved 2012-06-07, file K15T1-Team11-MRBS-Schedule-ver0.1.mpp)

Last finish stays 2012-08-10.

Added:

| ID | Task | Duration | Start | Finish | Resources |
| --- | --- | --- | --- | --- | --- |
| 26 | Prepare status report | 1d? | 2012-06-04 | 2012-06-04 |  |
| 27 | Collect/ analyze project metrics | 1d? | 2012-06-04 | 2012-06-04 |  |
| 45 | Discuss overall business process | 1d? | 2012-06-04 | 2012-06-04 | Huyen Le; Son Dang; Tam Do; Tin Nguyen; Toan Dang; Van Le |
| 46 | Define & document business process and list of functions and set priority | 1d? | 2012-06-04 | 2012-06-04 | Huyen Le |
| 47 | Description business process | 1d? | 2012-06-04 | 2012-06-04 | Tin Nguyen |

Removed: 6 Secure project sponsorship; 11 Long time goal; 48 Define preliminary connectivity LAN/WAN; 49 Define preliminary geographic factor

Changed:

| ID | Task | Duration | Predecessors | Other |
| --- | --- | --- | --- | --- |
| 3 | **Plan MRBS project** |  |  | was named Making "MRBS Project" plan |
| 6 | Define preliminary resources |  | Secure project sponsorship → 5 |  |
| 8 | **Goal & Objective of MRBS Project** |  |  | was named Goal & Objective of MRBS project |
| 9 | Business goal & objective of MRBS project |  | none → 7 | was named Short time goal |
| 10 | Plan comunication |  |  | was named Making comunication plan |
| 22 | **Monitor & Control MRBS Project (Track project)** |  |  | was named Project Monitor & Control |
| 33 | **Make detail schedule** |  |  | was named Making detail schedule |
| 37 | **Plan requirement management** |  |  | was named Making requirement management plan |
| 44 | **Define process working (business process) of current system** | 1d? → 1d |  | was named Define process working of current system |
| 48 | Define preliminary hardware enviroment |  |  | resources none → Tin Nguyen |
| 49 | Define preliminary software enviroment |  |  | resources none → Tin Nguyen |
| 50 | Define prelimininary communications environment |  |  | was named Define prelimininary comunications enviroment; resources none → Tin Nguyen |
| 51 | Define & analysis problems |  |  | resources none → Tin Nguyen |

## Version 4 (saved 2012-06-08, file K15T1-Team11-MRBS-Schedule-ver0.1.mpp)

Last finish stays 2012-08-10.

Added:

| ID | Task | Duration | Start | Finish | Predecessors | Resources |
| --- | --- | --- | --- | --- | --- | --- |
| 38 | Define template of Requirement Management Plan | 1d? | 2012-06-04 | 2012-06-04 |  | Van Le |
| 39 | Define role and responsibilities | 1d? | 2012-06-04 | 2012-06-04 | 38 | Van Le |
| 44 | Define template of Concept Of Operation document | 1d? | 2012-06-04 | 2012-06-04 |  |  |
| 48 | Define & documentation business process, list of functions and set priority | 1d? | 2012-06-04 | 2012-06-04 |  | Huyen Le |
| 49 | Review business process and description business process | 1d? | 2012-06-04 | 2012-06-04 |  | Tin Nguyen |

Removed: 46 Define & document business process and list of functions and set priority; 47 Description business process

Changed:

| ID | Task | Predecessors | Other |
| --- | --- | --- | --- |
| 40 | Define requirements processes | none → 39 | was named Determine process; resources none → Van Le |
| 41 | Define requirement documentation and organization | none → 40 | was named continuos; resources none → Van Le |
| 42 | Measure |  | was named continuos; resources none → Van Le |
| 43 | **Make concept of operation** |  | was named Making concept - operation |

## Version 5 (saved 2012-06-10, file K15T1-Team11-MRBS-Schedule-ver0.1.mpp)

Last finish stays 2012-08-10. Complete tasks 0 → 7.

Added:

| ID | Task | Duration | Start | Finish | Predecessors | Constraint | Resources |
| --- | --- | --- | --- | --- | --- | --- | --- |
| 36 | Update project schedule | 60d? | 2012-05-21 | 2012-08-08 |  | start no earlier than 2012-05-21 |  |
| 44 | Update Requirement management plan | 6d? | 2012-06-11 | 2012-06-16 |  | start no earlier than 2012-06-11 |  |
| 57 | **Indentify solution Requirement** | 2d | 2012-06-03 | 2012-06-04 |  |  |  |
| 58 | Define RBS template Decomposition Structure | 0.06d? | 2012-06-11 | 2012-06-11 |  | start no earlier than 2012-06-11 | Van Le |
| 59 | Make Requirement Breakdown Structure (RBS) | 0.75d? | 2012-06-04 | 2012-06-05 | 58, 56 |  | Tam Do |
| 62 | Review and update concept of operation | 2d? | 2012-06-12 | 2012-06-13 |  | finish no earlier than 2012-06-13 | Son Dang; Van Le |

Removed: 56 Show solution; 58 continuos; 59 continuos

Changed:

| ID | Task | Start | Finish | Duration | Complete | Total float | Predecessors | Other |
| --- | --- | --- | --- | --- | --- | --- | --- | --- |
| 2 | **Project Management** |  |  | 4d? → 4d |  | 0d → none |  |  |
| 3 | **Plan MRBS project** |  | 2012-06-07 → 2012-06-08 (+1d) | 4d? → 5d |  | 0d → none |  |  |
| 34 | Assign work for team |  |  |  |  |  |  | was named Assign work for members |
| 35 | Tracking project schedule | 2012-06-04 → 2012-05-23 (-12d) | 2012-06-04 → 2012-08-10 (+67d) | 1d? → 60d? |  |  |  | was named continous; constraint none → finish no earlier than 2012-08-10 |
| 37 | **Requirement** | 2012-06-04 → 2012-05-21 (-14d) | 2012-06-04 → 2012-06-16 (+12d) | 1d? → 22d |  | 0d → none |  |  |
| 39 | Define template of Requirement Management Plan | 2012-06-04 → 2012-06-11 (+7d) | 2012-06-04 → 2012-06-11 (+7d) | 1d? → 0.12d? |  |  |  | constraint none → start no earlier than 2012-06-11 |
| 40 | Define role and responsibilities | 2012-06-04 → 2012-06-11 (+7d) | 2012-06-04 → 2012-06-11 (+7d) | 1d? → 0.12d? |  |  |  | constraint none → start no earlier than 2012-06-11 |
| 41 | Define requirements processes | 2012-06-04 → 2012-06-11 (+7d) | 2012-06-04 → 2012-06-11 (+7d) | 1d? → 0.38d? |  |  |  | constraint none → start no earlier than 2012-06-11 |
| 42 | Define requirement documentation and organization | 2012-06-04 → 2012-06-11 (+7d) | 2012-06-04 → 2012-06-11 (+7d) | 1d? → 0.06d? |  |  |  | constraint none → start no earlier than 2012-06-11 |
| 43 | Measure | 2012-06-04 → 2012-06-11 (+7d) | 2012-06-04 → 2012-06-11 (+7d) | 1d? → 0.12d? |  |  | none → 42 | constraint none → start no earlier than 2012-06-11 |
| 45 | **Make concept of operation** | 2012-06-04 → 2012-06-03 (-1d) | 2012-06-04 → 2012-06-12 (+8d) | 1d → 9d |  | 0d → none |  |  |
| 46 | Define concept of operation template | 2012-06-04 → 2012-06-07 A (+3d) | 2012-06-04 → 2012-06-07 A (+3d) | 1d? → 0d | 0% → 100% | 0d → none | none → 43 | was named Define template of Concept Of Operation document; resources none → Van Le |
| 47 | **Define system requirement** | 2012-06-04 → 2012-06-03 (-1d) | 2012-06-04 → 2012-06-07 (+3d) | 1d → 5d |  | 0d → none |  |  |
| 48 | **Define process working (business process) of current system** | 2012-06-04 → 2012-06-07 (+3d) | 2012-06-04 → 2012-06-08 (+4d) | 1d → 2d |  | 0d → none |  |  |
| 49 | Discuss overall business process | 2012-06-04 → 2012-06-07 A (+3d) | 2012-06-04 → 2012-06-07 A (+3d) | 1d? → 1d | 0% → 100% | 0d → none |  | constraint none → finish no earlier than 2012-06-07 |
| 50 | Define & documentation business process | 2012-06-04 → 2012-06-07 A (+3d) | 2012-06-04 → 2012-06-07 A (+3d) | 1d? → 0.5d | 0% → 100% | 0d → none | none → 49 | was named Define & documentation business process, list of functions and set priority |
| 51 | Review business process and description business process | 2012-06-04 → 2012-06-07 A (+3d) | 2012-06-04 → 2012-06-07 A (+3d) | 1d? → 0.19d? | 0% → 100% | 0d → none | none → 50 | resources Tin Nguyen → Son Dang; Tin Nguyen |
| 53 | Define preliminary hardware enviroment | 2012-06-04 → 2012-06-07 A (+3d) | 2012-06-04 → 2012-06-07 A (+3d) | 1d? → 0d? | 0% → 100% | 0d → none |  | constraint none → start no earlier than 2012-06-07 |
| 54 | Define preliminary software enviroment | 2012-06-04 → 2012-06-07 A (+3d) | 2012-06-04 → 2012-06-07 A (+3d) | 1d? → 0d? | 0% → 100% | 0d → none |  | constraint none → start no earlier than 2012-06-07 |
| 55 | Define prelimininary communications environment | 2012-06-04 → 2012-06-07 A (+3d) | 2012-06-04 → 2012-06-07 A (+3d) | 1d? → 0d? | 0% → 100% | 0d → none |  | constraint none → start no earlier than 2012-06-07 |
| 56 | Define & analysis problems | 2012-06-04 → 2012-06-05 (+1d) | 2012-06-04 → 2012-06-05 (+1d) | 1d? → 0.25d? |  |  | none → 53, 54, 55 |  |
| 60 | **Define target areas for improvement** | 2012-06-04 → 2012-06-11 (+7d) | 2012-06-04 → 2012-06-12 (+8d) | 1d → 2d |  | 0d → none |  |  |
| 61 | List functions and define priority | 2012-06-04 → 2012-06-11 (+7d) | 2012-06-04 → 2012-06-12 (+8d) | 1d? → 2d |  |  | none → 59 | was named List functions; constraint none → finish no earlier than 2012-06-12; resources none → Tam Do |
| 63 | **Make Software Requirement Specifycation** |  |  |  |  |  |  | was named Making SRS |
| 64 | Design overview User Interface (UI) | 2012-06-04 → 2012-06-11 (+7d) | 2012-06-04 → 2012-06-11 (+7d) |  |  |  |  | was named Detail UC1; constraint none → start no earlier than 2012-06-11; resources none → Son Dang; Tam Do |

## Version 6 (saved 2012-06-11, file K15T1-Team11-MRBS-Schedule-ver0.1.mpp)

Last finish stays 2012-08-10. Complete tasks 7 → 10.

Added:

| ID | Task | Duration | Start | Finish | Predecessors | Constraint | Resources |
| --- | --- | --- | --- | --- | --- | --- | --- |
| 58 | Define High Level Requirement | 0.25d? | 2012-06-09 08:00 A | 2012-06-09 10:00 A |  | start no earlier than 2012-06-09 08:00 |  |
| 61 | Define target list functions improvement and set priority | 0.12d? | 2012-06-12 08:00 | 2012-06-12 09:00 | 60 | start no earlier than 2012-06-12 08:00 | Tam Do; Toan Dang |
| 64 | Discuss overview User Interface (UI) | 0.1d | 2012-06-08 08:00 A | 2012-06-08 17:00 A |  | finish no earlier than 2012-06-08 17:00 | Huyen Le; Son Dang; Tam Do; Tin Nguyen; Van Le |
| 66 | Define template SRS document | 1d? | 2012-06-12 08:00 | 2012-06-12 17:00 |  | start no earlier than 2012-06-12 08:00 | Huyen Le; Toan Dang |
| 70 | Complete SRS | 0.19d? | 2012-06-14 08:00 | 2012-06-14 09:30 |  | start no earlier than 2012-06-14 08:00 | Huyen Le; Son Dang |

Removed: 60 Define target areas for improvement; 61 List functions and define priority; 67 continuos

Changed:

| ID | Task | Start | Finish | Duration | Complete | Total float | Predecessors | Other |
| --- | --- | --- | --- | --- | --- | --- | --- | --- |
| 1 | **MRBS Project** | 2012-05-21 → 2012-05-21 08:00 | 2012-08-10 → 2012-08-10 17:00 |  |  |  |  |  |
| 2 | **Project Management** | 2012-06-04 → 2012-06-04 08:00 | 2012-06-07 → 2012-06-07 17:00 |  |  |  |  |  |
| 3 | **Plan MRBS project** | 2012-06-04 → 2012-06-04 08:00 | 2012-06-08 → 2012-06-08 17:00 |  |  |  |  |  |
| 4 | **Scope** | 2012-06-04 → 2012-06-04 08:00 | 2012-06-07 → 2012-06-07 17:00 |  |  |  |  |  |
| 5 | Determine project scope | 2012-06-04 → 2012-06-04 08:00 | 2012-06-04 → 2012-06-04 17:00 |  |  |  |  |  |
| 6 | Define preliminary resources | 2012-06-06 → 2012-06-06 08:00 | 2012-06-06 → 2012-06-06 17:00 |  |  |  |  |  |
| 7 | Scope complete | 2012-06-07 → 2012-06-07 08:00 | 2012-06-07 → 2012-06-07 17:00 |  |  |  |  |  |
| 8 | **Goal & Objective of MRBS Project** | 2012-06-04 → 2012-06-04 08:00 | 2012-06-04 → 2012-06-04 17:00 |  |  |  |  |  |
| 9 | Business goal & objective of MRBS project | 2012-06-04 → 2012-06-04 08:00 | 2012-06-04 → 2012-06-04 17:00 |  |  |  |  |  |
| 10 | Plan comunication | 2012-06-04 → 2012-06-04 08:00 | 2012-06-04 → 2012-06-04 17:00 |  |  |  |  |  |
| 11 | **Making measurment plan** | 2012-06-04 → 2012-06-04 08:00 | 2012-06-04 → 2012-06-04 17:00 |  |  |  |  |  |
| 12 | Define software measurement process | 2012-06-04 → 2012-06-04 08:00 | 2012-06-04 → 2012-06-04 17:00 |  |  |  |  |  |
| 13 | Determine method & technical | 2012-06-04 → 2012-06-04 08:00 | 2012-06-04 → 2012-06-04 17:00 |  |  |  |  |  |
| 14 | Estimate for overall project | 2012-06-04 → 2012-06-04 08:00 | 2012-06-04 → 2012-06-04 17:00 |  |  |  |  |  |
| 15 | continous | 2012-06-04 → 2012-06-04 08:00 | 2012-06-04 → 2012-06-04 17:00 |  |  |  |  |  |
| 16 | **Change Management** | 2012-06-04 → 2012-06-04 08:00 | 2012-06-04 → 2012-06-04 17:00 |  |  |  |  |  |
| 17 | continous | 2012-06-04 → 2012-06-04 08:00 | 2012-06-04 → 2012-06-04 17:00 |  |  |  |  |  |
| 18 | continous | 2012-06-04 → 2012-06-04 08:00 | 2012-06-04 → 2012-06-04 17:00 |  |  |  |  |  |
| 19 | **Risk Management** | 2012-06-04 → 2012-06-04 08:00 | 2012-06-04 → 2012-06-04 17:00 |  |  |  |  |  |
| 20 | continous | 2012-06-04 → 2012-06-04 08:00 | 2012-06-04 → 2012-06-04 17:00 |  |  |  |  |  |
| 21 | continous | 2012-06-04 → 2012-06-04 08:00 | 2012-06-04 → 2012-06-04 17:00 |  |  |  |  |  |
| 22 | **Monitor & Control MRBS Project (Track project)** | 2012-06-04 → 2012-06-04 08:00 | 2012-06-04 → 2012-06-04 17:00 |  |  |  |  |  |
| 23 | Determine methodology for Project | 2012-06-04 → 2012-06-04 08:00 | 2012-06-04 → 2012-06-04 17:00 |  |  |  |  |  |
| 24 | Determine method & technical | 2012-06-04 → 2012-06-04 08:00 | 2012-06-04 → 2012-06-04 17:00 |  |  |  |  |  |
| 25 | Configuration management | 2012-06-04 → 2012-06-04 08:00 | 2012-06-04 → 2012-06-04 17:00 |  |  |  |  |  |
| 26 | Prepare status report | 2012-06-04 → 2012-06-04 08:00 | 2012-06-04 → 2012-06-04 17:00 |  |  |  |  |  |
| 27 | Collect/ analyze project metrics | 2012-06-04 → 2012-06-04 08:00 | 2012-06-04 → 2012-06-04 17:00 |  |  |  |  |  |
| 28 | **Updade all document** | 2012-06-04 → 2012-06-04 08:00 | 2012-06-04 → 2012-06-04 17:00 |  |  |  |  |  |
| 29 | Update project plan | 2012-06-04 → 2012-06-04 08:00 | 2012-06-04 → 2012-06-04 17:00 |  |  |  |  |  |
| 30 | Update schedule | 2012-06-04 → 2012-06-04 08:00 | 2012-06-04 → 2012-06-04 17:00 |  |  |  |  |  |
| 31 | continuous | 2012-06-04 → 2012-06-04 08:00 | 2012-06-04 → 2012-06-04 17:00 |  |  |  |  |  |
| 32 | continuous | 2012-06-04 → 2012-06-04 08:00 | 2012-06-04 → 2012-06-04 17:00 |  |  |  |  |  |
| 33 | **Make detail schedule** | 2012-06-04 → 2012-06-04 08:00 | 2012-06-04 → 2012-06-04 17:00 |  |  |  |  |  |
| 34 | Assign work for team | 2012-06-04 → 2012-06-04 08:00 | 2012-06-04 → 2012-06-04 17:00 |  |  |  |  |  |
| 35 | Tracking project schedule | 2012-05-23 → 2012-05-24 08:00 (+1d) | 2012-08-10 → 2012-08-10 17:00 |  |  |  |  | constraint finish no earlier than 2012-08-10 → finish no earlier than 2012-08-10 17:00 |
| 36 | Update project schedule | 2012-05-21 → 2012-05-21 08:00 | 2012-08-08 → 2012-08-07 17:00 (-1d) |  |  |  |  | constraint start no earlier than 2012-05-21 → start no earlier than 2012-05-21 08:00 |
| 37 | **Requirement** | 2012-05-21 → 2012-05-21 08:00 | 2012-06-16 → 2012-06-16 17:00 |  |  |  |  |  |
| 38 | **Plan requirement management** | 2012-06-04 → 2012-06-11 08:00 (+7d) | 2012-06-04 → 2012-06-16 17:00 (+12d) |  |  | none → 0d |  |  |
| 39 | Define template of Requirement Management Plan | 2012-06-11 → 2012-06-11 08:00 | 2012-06-11 → 2012-06-11 09:00 |  |  |  |  | constraint start no earlier than 2012-06-11 → start no earlier than 2012-06-11 08:00 |
| 40 | Define role and responsibilities | 2012-06-11 → 2012-06-11 09:00 | 2012-06-11 → 2012-06-11 10:00 |  |  |  |  | constraint start no earlier than 2012-06-11 → start no earlier than 2012-06-11 08:00 |
| 41 | Define requirements processes | 2012-06-11 → 2012-06-11 10:00 | 2012-06-11 → 2012-06-11 14:00 |  |  |  |  | constraint start no earlier than 2012-06-11 → start no earlier than 2012-06-11 08:00 |
| 42 | Define requirement documentation and organization | 2012-06-11 → 2012-06-11 14:00 | 2012-06-11 → 2012-06-11 14:30 |  |  |  |  | constraint start no earlier than 2012-06-11 → start no earlier than 2012-06-11 08:00 |
| 43 | Measure | 2012-06-11 → 2012-06-11 14:30 | 2012-06-11 → 2012-06-11 15:30 |  |  |  |  | constraint start no earlier than 2012-06-11 → start no earlier than 2012-06-11 08:00 |
| 44 | Update Requirement management plan | 2012-06-11 → 2012-06-11 08:00 | 2012-06-16 → 2012-06-16 17:00 |  |  |  |  | constraint start no earlier than 2012-06-11 → start no earlier than 2012-06-11 08:00 |
| 45 | **Make concept of operation** | 2012-06-03 → 2012-06-07 08:00 (+4d) | 2012-06-12 → 2012-06-12 17:00 | 9d → 6d |  |  |  |  |
| 46 | Define concept of operation template | 2012-06-07 A → 2012-06-07 08:00 A | 2012-06-07 A → 2012-06-07 08:00 A |  |  |  |  |  |
| 47 | **Define system requirement** | 2012-06-03 → 2012-06-07 08:00 (+4d) | 2012-06-07 → 2012-06-08 17:00 (+1d) | 5d → 2d |  |  |  |  |
| 48 | **Define process working (business process) of current system** | 2012-06-07 → 2012-06-07 08:00 | 2012-06-08 → 2012-06-08 17:00 |  |  |  |  |  |
| 49 | Discuss overall business process | 2012-06-07 A → 2012-06-07 08:00 A | 2012-06-07 A → 2012-06-07 10:17 A | 1d → 0.29d |  |  |  | constraint finish no earlier than 2012-06-07 → finish no earlier than 2012-06-07 17:00 |
| 50 | Define & documentation business process | 2012-06-07 A → 2012-06-07 08:00 A | 2012-06-07 A → 2012-06-08 09:20 A (+1d) | 0.5d → 1.17d |  |  | 49 → 49, 46 |  |
| 51 | Review business process and description business process | 2012-06-07 A → 2012-06-07 08:00 A | 2012-06-07 A → 2012-06-07 09:30 A |  |  |  |  |  |
| 52 | **Define current infrastructure** | 2012-06-04 → 2012-06-07 08:00 (+3d) | 2012-06-04 → 2012-06-07 17:00 (+3d) |  |  | none → 0d |  |  |
| 53 | Define preliminary hardware enviroment | 2012-06-07 A → 2012-06-07 08:00 A | 2012-06-07 A → 2012-06-07 08:30 A | 0d? → 0.06d? |  |  |  | constraint start no earlier than 2012-06-07 → start no earlier than 2012-06-07 08:00 |
| 54 | Define preliminary software enviroment | 2012-06-07 A → 2012-06-07 08:00 A | 2012-06-07 A → 2012-06-07 08:30 A | 0d? → 0.06d? |  |  |  | constraint start no earlier than 2012-06-07 → start no earlier than 2012-06-07 08:00 |
| 55 | Define prelimininary communications environment | 2012-06-07 A → 2012-06-07 08:00 A | 2012-06-07 A → 2012-06-07 08:30 A | 0d? → 0.06d? |  |  |  | constraint start no earlier than 2012-06-07 → start no earlier than 2012-06-07 08:00 |
| 56 | Define & analysis problems | 2012-06-05 → 2012-06-07 08:00 A (+2d) | 2012-06-05 → 2012-06-07 09:00 A (+2d) | 0.25d? → 0.12d? | 0% → 100% | 0d → none |  |  |
| 57 | **Indentify solution Requirement** | 2012-06-03 → 2012-06-09 08:00 (+6d) | 2012-06-04 → 2012-06-12 17:00 (+8d) | 2d → 4d |  |  |  |  |
| 59 | Define RBS template Decomposition Structure | 2012-06-11 → 2012-06-11 08:00 | 2012-06-11 → 2012-06-11 08:30 |  |  |  |  | constraint start no earlier than 2012-06-11 → start no earlier than 2012-06-11 08:00 |
| 60 | Make Requirement Breakdown Structure (RBS) | 2012-06-04 → 2012-06-11 08:00 (+7d) | 2012-06-05 → 2012-06-12 17:00 (+7d) | 0.75d? → 2d |  | 0d → none |  | resources Tam Do → Tam Do; Toan Dang |
| 62 | Review and update concept of operation | 2012-06-12 → 2012-06-13 10:00 (+1d) | 2012-06-13 → 2012-06-13 17:00 | 2d? → 0.75d |  |  | none → 51 | constraint finish no earlier than 2012-06-13 → finish no earlier than 2012-06-13 17:00 |
| 63 | **Make Software Requirement Specifycation (SRS)** | 2012-06-04 → 2012-06-08 08:00 (+4d) | 2012-06-04 → 2012-06-16 17:00 (+12d) | 1d? → 9d |  | 0d → none |  | was named Make Software Requirement Specifycation |
| 65 | Design overview UI | 2012-06-11 → 2012-06-08 08:00 A (-3d) | 2012-06-11 → 2012-06-13 17:00 (+2d) | 1d → 1.88d? | 0% → 40% |  |  | was named Design overview User Interface (UI); constraint start no earlier than 2012-06-11 → finish no earlier than 2012-06-13 17:00 |
| 67 | Define Usecase Diagram | 2012-06-04 → 2012-06-13 08:00 (+9d) | 2012-06-04 → 2012-06-13 09:00 (+9d) | 1d? → 0.12d? |  |  |  | was named Detail UC2; constraint none → start no earlier than 2012-06-13 08:00; resources none → Tam Do; Tin Nguyen |
| 68 | Define Usecase Description | 2012-06-04 → 2012-06-13 08:00 (+9d) | 2012-06-04 → 2012-06-13 11:00 (+9d) | 1d? → 0.38d? |  |  |  | was named continuos; constraint none → start no earlier than 2012-06-13 08:00; resources none → Tam Do; Tin Nguyen |
| 69 | Review and update Usecase diagram & Usecase discription | 2012-06-04 → 2012-06-13 08:00 (+9d) | 2012-06-04 → 2012-06-14 17:00 (+10d) | 1d? → 2d? |  |  |  | was named Review UC; constraint none → finish no earlier than 2012-06-14 17:00; resources none → Son Dang; Van Le |
| 71 | Review and update SRS | 2012-06-04 → 2012-06-14 08:00 (+10d) | 2012-06-04 → 2012-06-16 17:00 (+12d) | 1d? → 3d? |  |  |  | was named Update SRS; constraint none → start no earlier than 2012-06-14 08:00; resources none → Son Dang; Van Le; Tam Do |
| 72 | **Analysis & Design** | 2012-06-04 → 2012-06-04 08:00 | 2012-06-04 → 2012-06-04 17:00 |  |  |  |  |  |
| 73 | Making SDS | 2012-06-04 → 2012-06-04 08:00 | 2012-06-04 → 2012-06-04 17:00 |  |  |  |  |  |
| 74 | Making SAD | 2012-06-04 → 2012-06-04 08:00 | 2012-06-04 → 2012-06-04 17:00 |  |  |  |  |  |
| 75 | **Development** | 2012-06-04 → 2012-06-04 08:00 | 2012-06-04 → 2012-06-04 17:00 |  |  |  |  |  |

| ID | Task | Start | Finish |
| --- | --- | --- | --- |
| 76 | Source code | 2012-06-04 → 2012-06-04 08:00 | 2012-06-04 → 2012-06-04 17:00 |
| 77 | Defect Report | 2012-06-04 → 2012-06-04 08:00 | 2012-06-04 → 2012-06-04 17:00 |
| 78 | Prototype | 2012-06-04 → 2012-06-04 08:00 | 2012-06-04 → 2012-06-04 17:00 |
| 79 | **Testing** | 2012-06-04 → 2012-06-04 08:00 | 2012-06-04 → 2012-06-04 17:00 |
| 80 | Making test plan | 2012-06-04 → 2012-06-04 08:00 | 2012-06-04 → 2012-06-04 17:00 |
| 81 | Defect report | 2012-06-04 → 2012-06-04 08:00 | 2012-06-04 → 2012-06-04 17:00 |
| 82 | **Packing & Deployment** | 2012-06-04 → 2012-06-04 08:00 | 2012-06-04 → 2012-06-04 17:00 |
| 83 | Prototype | 2012-06-04 → 2012-06-04 08:00 | 2012-06-04 → 2012-06-04 17:00 |
| 84 | User guide | 2012-06-04 → 2012-06-04 08:00 | 2012-06-04 → 2012-06-04 17:00 |

## Version 7 (saved 2012-06-12, file K15T1-Team11-MRBS-Schedule-ver1.0.mpp)

Last finish stays 2012-08-10. Complete tasks 10 → 11.

Changed:

| ID | Task | Start | Finish | Duration | Complete | Total float | Other |
| --- | --- | --- | --- | --- | --- | --- | --- |
| 38 | **Plan requirement management** | 2012-06-11 08:00 → 2012-06-12 08:00 (+1d) | 2012-06-16 17:00 → 2012-06-18 17:00 (+2d) |  |  |  |  |
| 39 | Define template of Requirement Management Plan | 2012-06-11 08:00 → 2012-06-12 08:00 (+1d) | 2012-06-11 09:00 → 2012-06-12 09:00 (+1d) |  |  |  | constraint start no earlier than 2012-06-11 08:00 → start no earlier than 2012-06-12 08:00 |
| 40 | Define role and responsibilities | 2012-06-11 09:00 → 2012-06-12 09:00 (+1d) | 2012-06-11 10:00 → 2012-06-12 10:00 (+1d) |  |  |  | constraint start no earlier than 2012-06-11 08:00 → start no earlier than 2012-06-12 08:00 |
| 41 | Define requirements processes | 2012-06-11 10:00 → 2012-06-12 10:00 (+1d) | 2012-06-11 14:00 → 2012-06-12 14:00 (+1d) |  |  |  | constraint start no earlier than 2012-06-11 08:00 → start no earlier than 2012-06-12 08:00 |
| 42 | Define requirement documentation and organization | 2012-06-11 14:00 → 2012-06-12 14:00 (+1d) | 2012-06-11 14:30 → 2012-06-12 14:30 (+1d) |  |  |  | constraint start no earlier than 2012-06-11 08:00 → start no earlier than 2012-06-12 08:00 |
| 43 | Measure | 2012-06-11 14:30 → 2012-06-12 14:30 (+1d) | 2012-06-11 15:30 → 2012-06-12 15:30 (+1d) |  |  |  | constraint start no earlier than 2012-06-11 08:00 → start no earlier than 2012-06-12 08:00 |
| 44 | Update Requirement management plan | 2012-06-11 08:00 → 2012-06-12 08:00 (+1d) |  | 6d? → 5d? |  |  | constraint start no earlier than 2012-06-11 08:00 → start no earlier than 2012-06-12 08:00 |
| 58 | Define High Level Requirement | 2012-06-09 08:00 A → 2012-06-08 08:00 A (-1d) | 2012-06-09 10:00 A → 2012-06-08 08:24 A (-1d) | 0.25d? → 0.05d? |  |  | resources none → Huyen Le; Son Dang; Tam Do; Tin Nguyen; Van Le |
| 59 | Define RBS template Decomposition Structure | 2012-06-11 08:00 A | 2012-06-11 08:30 A |  | 0% → 100% | 0d → none |  |

## Version 8 (saved 2012-06-13, file K15T1-Team11-MRBS-Schedule-ver1.0.mpp)

Last finish stays 2012-08-10.

Changed:

| ID | Task | Start | Finish | Duration | Complete |
| --- | --- | --- | --- | --- | --- |
| 66 | Define template SRS document | 2012-06-12 08:00 A | 2012-06-12 17:00 → 2012-06-12 08:00 | 1d? → 0d? | 0% → 50% |
